Schedule from MS Project, 2017-08-07 to 2017-08-31, A marks actual dates.

## Calendars

- 标准: Mon-Fri 08:00-12:00, 13:00-17:00; Sat-Sun off.

## Resources

| Resource |
| --- |
| 陈小桂 |
| 王大鹏 |
| 梁廷森 |
| 付陈林 |
| 文栎波 |
| 张籽娟 |
| 李凯 |
| 郭婷 |
| 杨建 |
| 买晨雨 |

## Schedule

| ID | WBS | Task | Type | Duration | Start | Finish | Predecessors | Complete | Remaining | Total slack | Deadline | Resources | Work | Actual work |
| --- | --- | --- | --- | --- | --- | --- | --- | --- | --- | --- | --- | --- | --- | --- |
| 1 | 1 | **会员系统开发** |  | 13d | 2017-08-15 A | 2017-08-31 |  | 30% | 9.14d | 0d |  |  | 192h | 88h |
| 2 | 1.1 | **业务功能开发** |  | 13d | 2017-08-15 A | 2017-08-31 |  | 6% | 12.28d | 0d |  |  | 112h | 8h |
| 3 | 1.1.1 | 储值购买反结算 | manual | 1d | 2017-08-15 A | 2017-08-15 A |  | 100% |  |  | 2017-08-15 | 陈小桂 | 8h | 8h |
| 4 | 1.1.2 | 卡券购买反结算 | manual | 1d | 2017-08-16 | 2017-08-16 | 3 |  |  |  |  | 陈小桂 | 8h |  |
| 5 | 1.1.3 | 卡包购买反结算 | manual | 1d | 2017-08-17 | 2017-08-17 | 4 |  |  |  |  | 陈小桂 | 8h |  |
| 6 | 1.1.4 | 储值、卡券、卡包购买打印结算单 | manual | 2d | 2017-08-17 | 2017-08-18 |  |  |  |  |  | 张籽娟 | 16h |  |
| 7 | 1.1.5 | 结算不开票 | manual | 1d | 2017-08-18 | 2017-08-18 | 5 |  |  |  |  | 陈小桂 | 8h |  |
| 8 | 1.1.6 | 结算增加规则 | manual | 3d | 2017-08-22 | 2017-08-24 | 7 |  |  |  |  | 陈小桂 | 24h |  |
| 9 | 1.1.7 | 储值、卡券、卡包 界面整合 | manual | 5d | 2017-08-25 | 2017-08-31 | 8 |  |  |  |  | 陈小桂 | 40h |  |
| 10 | 1.1.8 | 客户微信端--储值明细改造 | manual | 1d? | 2017-08-15 | 2017-08-15 |  |  |  |  |  |  |  |  |
| 11 | 1.1.9 | 界面调整 | manual | 1d? | 2017-08-15 | 2017-08-15 |  |  |  |  |  |  |  |  |
| 12 | 1.1.10 | 客户微信端--积分明细改造 | manual | 1d? | 2017-08-15 | 2017-08-15 |  |  |  |  |  |  |  |  |
| 13 | 1.1.11 | 卡券界面改造 | manual | 1d? | 2017-08-15 | 2017-08-15 |  |  |  |  |  |  |  |  |
| 14 | 1.2 | **规则定时任务** |  | 1d | 2017-08-15 A | 2017-08-15 |  | 53% | 0.47d | 0d |  |  | 80h | 80h |
| 15 | 1.2.1 | 会员卡券过期更新 | manual | 1d | 2017-08-15 A | 2017-08-15 A |  | 100% |  |  |  | 王大鹏 | 8h | 8h |
| 16 | 1.2.2 | 会员积分过期更新 | manual | 1d | 2017-08-15 A | 2017-08-15 A |  | 100% |  |  |  | 王大鹏 | 8h | 8h |
| 17 | 1.2.3 | 会员储值过期更新 | manual | 1d | 2017-08-15 A | 2017-08-15 A |  | 100% |  |  |  | 王大鹏 | 8h | 8h |
| 18 | 1.2.4 | 会员升级定时任务 | manual | 1d | 2017-08-15 A | 2017-08-15 A |  | 100% |  |  |  | 王大鹏 | 8h | 8h |
| 19 | 1.2.5 | 会员降级定时任务 | manual | 1d | 2017-08-15 A | 2017-08-15 A |  | 100% |  |  |  | 王大鹏 | 8h | 8h |
| 20 | 1.2.6 | 会员权益定时任务 | manual | 1d | 2017-08-15 A | 2017-08-15 A |  | 100% |  |  |  | 王大鹏 | 8h | 8h |
| 21 | 1.2.7 | 会员卡券到期提醒 | manual | 1d | 2017-08-15 A | 2017-08-15 A |  | 100% |  |  |  | 王大鹏 | 8h | 8h |
| 22 | 1.2.8 | 会员积分到期提醒 | manual | 1d | 2017-08-15 A | 2017-08-15 A |  | 100% |  |  |  | 王大鹏 | 8h | 8h |
| 23 | 1.2.9 | 会员生日到期提醒 | manual | 1d | 2017-08-15 A | 2017-08-15 A |  | 100% |  |  |  | 王大鹏 | 8h | 8h |
| 24 | 1.2.10 | 会员储值到期提醒 | manual | 1d | 2017-08-15 A | 2017-08-15 A |  | 100% |  |  |  | 王大鹏 | 8h | 8h |
| 25 | 1.2.11 | 会员首保到期提醒 | manual | 1d? | 2017-08-15 | 2017-08-15 |  |  |  |  |  |  |  |  |
| 26 | 1.2.12 | 会员保养到期提醒 | manual | 1d? | 2017-08-15 | 2017-08-15 |  |  |  |  |  |  |  |  |
| 27 | 1.2.13 | 会员保险到期提醒 | manual | 1d? | 2017-08-15 | 2017-08-15 |  |  |  |  |  |  |  |  |
| 28 | 1.2.14 | 驾照年审到期提醒 | manual | 1d? | 2017-08-15 | 2017-08-15 |  |  |  |  |  |  |  |  |
| 29 | 1.2.15 | 车辆年检到期提醒 | manual | 1d? | 2017-08-15 | 2017-08-15 |  |  |  |  |  |  |  |  |
| 30 | 1.2.16 | 会员卡券购买提醒 | manual | 1d? | 2017-08-15 | 2017-08-15 |  |  |  |  |  |  |  |  |
| 31 | 1.2.17 | 会员储值提醒 | manual | 1d? | 2017-08-15 | 2017-08-15 |  |  |  |  |  |  |  |  |
| 32 | 1.2.18 | 会员套餐购买提醒 | manual | 1d? | 2017-08-15 | 2017-08-15 |  |  |  |  |  |  |  |  |
| 33 | 1.2.19 | 会员消费结账（问卷调查） | manual | 1d? | 2017-08-15 | 2017-08-15 |  |  |  |  |  |  |  |  |

| ID | WBS | Task | Type | Duration | Start | Finish | Complete | Remaining | Total slack | Resources | Work |
| --- | --- | --- | --- | --- | --- | --- | --- | --- | --- | --- | --- |
| 34 | 2 | **业务报表开发** |  | 1d | 2017-08-16 | 2017-08-16 |  |  | 0d |  |  |
| 35 | 2.1 | **运通汇系统客服业务报表-经销店** |  | 1d | 2017-08-16 | 2017-08-16 |  |  | 0d |  |  |
| 36 | 2.1.1 | 会员信息列表 | manual | 1d? | 2017-08-16 | 2017-08-16 |  |  |  |  |  |
| 37 | 2.1.2 | 会员积分列表 | manual | 1d? | 2017-08-16 | 2017-08-16 |  |  |  |  |  |
| 38 | 2.1.3 | 会员卡券列表 | manual | 1d? | 2017-08-16 | 2017-08-16 |  |  |  |  |  |
| 39 | 2.1.4 | 会员储值列表 | manual | 1d? | 2017-08-16 | 2017-08-16 |  |  |  |  |  |
| 40 | 3 | **云之家轻应用开发** |  | 5d | 2017-08-07 A | 2017-08-11 | 38% | 3.08d | 0d |  |  |
| 41 | 3.1 | 投诉建议应用开发 | manual | 5d | 2017-08-07 A | 2017-08-11 A | 100% |  |  |  |  |
| 42 | 3.2 | **开票信息应用开发** |  | 1d | 2017-08-07 | 2017-08-07 |  |  | 0d |  |  |
| 43 | 3.2.1 | 接口开发 | manual | 1d? | 2017-08-07 | 2017-08-07 |  |  |  |  |  |
| 44 | 3.2.2 | 界面开发 | manual | 1d? | 2017-08-07 | 2017-08-07 |  |  |  |  |  |
| 45 | 3.2.3 | 界面接口调试 | manual | 1d? | 2017-08-07 | 2017-08-07 |  |  |  |  |  |
| 46 | 3.2.4 | 测试上线 | manual | 1d? | 2017-08-07 | 2017-08-07 |  |  |  |  |  |
| 47 | 3.3 | **电子名片应用开发** |  | 1d | 2017-08-07 | 2017-08-07 |  |  | 0d |  |  |
| 48 | 3.3.1 | 接口开发 | manual | 1d? | 2017-08-07 | 2017-08-07 |  |  |  |  |  |
| 49 | 3.3.2 | 界面开发 | manual | 1d? | 2017-08-07 | 2017-08-07 |  |  |  |  |  |
| 50 | 3.3.3 | 界面接口调试 | manual | 1d? | 2017-08-07 | 2017-08-07 |  |  |  |  |  |
| 51 | 3.3.4 | 测试上线 | manual | 1d? | 2017-08-07 | 2017-08-07 |  |  |  |  |  |
| 52 | 4 | **bug修改** |  | 1d | 2017-08-16 | 2017-08-16 |  |  | 0d |  | 24h |
| 53 | 4.1 | 温州欣奥会员导入 | manual | 1d | 2017-08-16 | 2017-08-16 |  |  |  | 梁廷森 | 8h |
| 54 | 4.2 | 重庆汇捷无限卡券显示为单次问题 | manual | 1d | 2017-08-16 | 2017-08-16 |  |  |  | 陈小桂 | 8h |
| 55 | 4.3 | 北京兴奥无法结算问题 | manual | 1d | 2017-08-16 | 2017-08-16 |  |  |  | 陈小桂 | 8h |
| 56 | 5 | **高可用系统框架** |  | 1d | 2017-08-16 | 2017-08-16 |  |  | 0d |  | 8h |
| 57 | 5.1 | **方案整理** |  | 1d | 2017-08-16 | 2017-08-16 |  |  | 0d | 王大鹏 | 8h |
| 58 | 5.1.1 | 方案制定 | manual | 1d? | 2017-08-16 | 2017-08-16 |  |  |  |  |  |
| 59 | 5.1.2 | 方案讨论 | manual | 1d? | 2017-08-16 | 2017-08-16 |  |  |  |  |  |
| 60 | 5.1.3 | 方案确认 | manual | 1d? | 2017-08-16 | 2017-08-16 |  |  |  |  |  |
| 61 | 5.2 | 方案实施 | manual | 1d? | 2017-08-16 | 2017-08-16 |  |  |  |  |  |

| ID | WBS | Task | Type | Duration | Start | Finish | Total slack | Resources | Work |
| --- | --- | --- | --- | --- | --- | --- | --- | --- | --- |
| 62 | 6 | **财务系统开票明细** |  | 1d | 2017-08-16 | 2017-08-16 | 0d |  | 8h |
| 63 | 6.1 | DSM数据对接调研 | manual | 1d | 2017-08-16 | 2017-08-16 |  | 付陈林 | 8h |
